Schedule from MS Project, 2009-07-03 to 2009-07-27.

## Calendars

- 标准: Mon-Fri 08:00-12:00, 13:00-17:00; Sat-Sun off. Exceptions (off unless hours are given): 2009-07-05 08:00-12:00, 13:00-17:00.

## Resources

| Resource |
| --- |
| 周毅 |
| 吴同庆 |
| 孙成 |

## Schedule

| ID | Task | Duration | Start | Finish | Predecessors | Total slack | Free slack | Constraint | Resources | Work |
| --- | --- | --- | --- | --- | --- | --- | --- | --- | --- | --- |
| 1 | 主页UI设计 | 2d? | 2009-07-03 | 2009-07-05 |  | 1d | 0d | finish no earlier than 2009-07-05 | 周毅 | 16h |
| 2 | 账户余额UI设计 | 4d? | 2009-07-06 | 2009-07-09 | 1 | 1d | 0d | finish no earlier than 2009-07-09 | 周毅 | 32h |
| 3 | 账户余额接口开发 | 2d | 2009-07-06 | 2009-07-07 |  | 10d | 1d | finish no earlier than 2009-07-07 | 吴同庆; 孙成 | 32h |
| 4 | 消费账单接口开发 | 2d? | 2009-07-07 | 2009-07-08 |  | 13d |  | finish no earlier than 2009-07-08 | 吴同庆; 孙成 | 32h |
| 5 | 消费账单UI设计 | 4d? | 2009-07-10 | 2009-07-15 | 2 | 1d | 0d |  | 周毅 | 32h |
| 6 | 账户余额widget开发 | 3d? | 2009-07-09 | 2009-07-13 | 3 | 9d | 0d | start no earlier than 2009-07-09 | 孙成; 吴同庆 | 48h |
| 7 | 增值业务定置UI设计 | 4d? | 2009-07-16 | 2009-07-21 | 5 | 1d | 0d | finish no earlier than 2009-07-21 | 周毅 | 32h |
| 8 | 增值业务定制接口开发 | 1d? | 2009-07-14 | 2009-07-14 | 6 | 9d |  | finish no earlier than 2009-07-14 | 吴同庆; 孙成 | 16h |
| 9 | 消费账单widget开发 | 3d? | 2009-07-15 | 2009-07-17 |  | 3d | 0d | start no earlier than 2009-07-15 | 吴同庆; 孙成 | 48h |
| 10 | 增值业务查询及退订UI设计 | 3d? | 2009-07-22 | 2009-07-24 | 7 | 1d |  | finish no earlier than 2009-07-22 | 周毅 | 24h |
| 11 | 增值业务查询及退订接口开发 | 1d? | 2009-07-20 | 2009-07-20 | 9 | 3d | 0d | finish no earlier than 2009-07-20 | 吴同庆; 孙成 | 16h |
| 12 | 增值业务定制widget开发 | 2d? | 2009-07-21 | 2009-07-22 | 11 | 3d |  | start no earlier than 2009-07-21 | 吴同庆; 孙成 | 32h |
| 13 | 增值业务查询及退订widget开发 | 2d? | 2009-07-24 | 2009-07-27 |  | 0d |  | finish no earlier than 2009-07-27 | 吴同庆; 孙成 | 32h |
