Schedule from MS Project, 2009-09-15 to 2009-12-11.

## Calendars

- 标准: Mon-Fri 08:00-12:00, 13:00-17:00; Sat-Sun off. Exceptions (off unless hours are given): 2009-10-10 08:00-12:00, 13:00-17:00.

## Resources

| Resource |
| --- |
| 甘雨波 |
| 吴同庆 |
| 公客部 |
| 孙成 |
| 定向传媒 |
| 谢芸 |
| 林福春 |
| 陈庭昀 |
| 林裕辉 |
| 黄晓春 |

## Schedule

| ID | WBS | Task | Duration | Start | Finish | Predecessors | Total slack | Free slack | Constraint | Resources | Work |
| --- | --- | --- | --- | --- | --- | --- | --- | --- | --- | --- | --- |
| 1 | 1 | **业务类别管理** | 4d? | 2009-09-15 | 2009-09-18 |  | 58d |  |  |  | 32h |
| 2 | 1.1 | 业务类别配置-开发 | 2d? | 2009-09-15 | 2009-09-16 |  | 58d | 0d | finish no earlier than 2009-09-16 | 甘雨波 | 16h |
| 3 | 1.2 | 业务类型配置-开发 | 2d | 2009-09-17 | 2009-09-18 | 2 | 58d | 0d |  | 甘雨波 | 16h |
| 4 | 2 | **业务配置管理** | 42d? | 2009-09-15 | 2009-11-10 |  | 23d |  |  |  | 456h |
| 5 | 2.1 | 增值业务配置-设计 | 2d? | 2009-09-15 | 2009-09-16 |  | 60d | 0d | start no earlier than 2009-09-15 | 吴同庆 | 16h |
| 6 | 2.2 | 增值业务配置-应用开发 | 3d? | 2009-09-17 | 2009-09-21 | 5 | 60d |  | finish no earlier than 2009-09-21 | 吴同庆 | 24h |
| 7 | 2.3 | 增值业务配置-web开发 | 3d? | 2009-09-21 | 2009-09-23 | 3 | 58d |  | start no earlier than 2009-09-21 | 甘雨波 | 24h |
| 8 | 2.4 | 增值业务数据整理 | 7d? | 2009-09-15 | 2009-09-23 |  | 58d |  | start no earlier than 2009-09-15 | 公客部 | 56h |
| 9 | 2.5 | 增值业务页面设计 | 10d? | 2009-09-15 | 2009-09-28 |  | 55d |  | start no earlier than 2009-09-15 | 定向传媒 | 80h |
| 10 | 2.6 | 增值业务页面相关资源制作 | 24d? | 2009-10-09 | 2009-11-10 |  | 23d |  | finish no earlier than 2009-11-10 | 定向传媒 | 192h |
| 11 | 2.7 | 业务配置及接口功能测试 | 2d? | 2009-09-29 | 2009-09-30 |  | 53d |  | finish no earlier than 2009-09-30 | 谢芸 | 16h |
| 12 | 2.8 | 增值业务数据录入 | 6d? | 2009-10-09 | 2009-10-15 |  | 41d |  | finish no earlier than 2009-10-15 | 谢芸 | 48h |
| 13 | 3 | **接口开发联调** | 5d? | 2009-09-22 | 2009-09-28 |  | 55d |  |  |  | 56h |
| 14 | 3.1 | 增值业务接口-设计 | 3d? | 2009-09-22 | 2009-09-24 |  | 55d | 0d | start no earlier than 2009-09-22 | 吴同庆 | 24h |
| 15 | 3.2 | 增值业务接口-web开发 | 2d? | 2009-09-25 | 2009-09-28 |  | 55d |  | finish no earlier than 2009-09-28 | 甘雨波 | 16h |
| 16 | 3.3 | 增值业务接口-接口开发联调 | 2d? | 2009-09-25 | 2009-09-28 | 14 | 55d |  | start no earlier than 2009-09-25 | 孙成 | 16h |
| 17 | 4 | **订购管理** | 13d? | 2009-09-25 | 2009-10-12 |  | 44d |  |  |  | 104h |
| 18 | 4.1 | 我的订购-设计 | 3d | 2009-09-25 | 2009-09-29 |  | 45d | 7d | finish no earlier than 2009-09-29 | 吴同庆; 陈庭昀 | 48h |
| 19 | 4.2 | 我的订购-web开发 | 2d | 2009-10-10 | 2009-10-12 |  | 44d |  | finish no earlier than 2009-10-12 | 甘雨波; 林福春 | 32h |
| 20 | 4.3 | 我的订购-应用开发 | 3d? | 2009-10-09 | 2009-10-12 | 18 | 38d | 0d | finish no earlier than 2009-10-12 | 吴同庆 | 24h |
| 21 | 5 | **评论管理** | 5d? | 2009-10-13 | 2009-10-19 |  | 4d |  |  |  | 56h |
| 22 | 5.1 | 用户评论，打分-设计 | 3d? | 2009-10-13 | 2009-10-15 | 20 | 38d | 0d | finish no earlier than 2009-10-13 | 吴同庆 | 24h |
| 23 | 5.2 | 用户评论，打分-开发 | 2d | 2009-10-16 | 2009-10-19 |  | 1d | 0d | start no earlier than 2009-10-16 | 甘雨波; 林福春 | 32h |
| 24 | 6 | **模块配置管理** | 23d? | 2009-10-16 | 2009-11-17 |  | 3d |  |  |  | 496h |
| 25 | 6.1 | 模块配置-设计 | 3d | 2009-10-16 | 2009-10-20 | 22 | 38d |  | finish no earlier than 2009-10-12 | 吴同庆; 陈庭昀 | 48h |
| 26 | 6.2 | 活动专区模块配置-开发 | 2d | 2009-10-20 | 2009-10-21 | 23 | 33d | 0d | finish no earlier than 2009-10-15 | 甘雨波 | 16h |
| 27 | 6.3 | 导航菜单配置-开发 | 2d | 2009-10-22 | 2009-10-23 | 26 | 33d | 0d | start no earlier than 2009-10-09 | 甘雨波; 林福春 | 32h |
| 28 | 6.4 | 广告栏配置-开发 | 2d? | 2009-10-26 | 2009-10-27 | 27 | 33d |  | finish no earlier than 2009-10-13 | 甘雨波 | 16h |
| 29 | 6.5 | 页面配置功能测试 | 2d? | 2009-10-19 | 2009-10-20 |  | 24d | 0d | finish no earlier than 2009-10-20 | 谢芸 | 16h |
| 30 | 6.6 | 超值特价模块配置-开发 | 2d? | 2009-10-20 | 2009-10-21 | 23 | 1d | 0d | finish no earlier than 2009-10-21 | 甘雨波 | 16h |
| 31 | 6.7 | 精彩促销模块配置-开发 | 2d? | 2009-10-22 | 2009-10-23 | 30 | 1d | 0d | finish no earlier than 2009-10-23 | 甘雨波 | 16h |
| 32 | 6.8 | 最新上架模块配置-开发 | 2d | 2009-10-26 | 2009-10-27 | 31 | 1d | 0d | finish no earlier than 2009-10-27 | 甘雨波; 林福春 | 32h |
| 33 | 6.9 | 产品体验模块配置-开发 | 2d? | 2009-10-28 | 2009-10-29 | 32 | 1d | 0d | finish no earlier than 2009-10-29 | 甘雨波 | 16h |
| 34 | 6.10 | 活动专区模块配置-开发 | 2d | 2009-10-30 | 2009-11-02 | 33 | 1d | 0d | finish no earlier than 2009-11-02 | 甘雨波; 林福春 | 32h |
| 35 | 6.11 | 活动专区页面配置-设计 | 2d | 2009-10-21 | 2009-10-22 | 29 | 30d | 0d | finish no earlier than 2009-10-22 | 吴同庆; 陈庭昀 | 32h |
| 36 | 6.12 | 精彩促销页面配置-设计 | 2d? | 2009-10-23 | 2009-10-26 | 35 | 30d | 1d |  | 吴同庆 | 16h |
| 37 | 6.13 | 特价宝贝页面配置-设计 | 2d | 2009-10-28 | 2009-10-29 | 36 | 29d | 0d | start no earlier than 2009-10-28 | 吴同庆; 陈庭昀 | 32h |
| 38 | 6.14 | 软件下载页面配置-设计 | 2d? | 2009-10-30 | 2009-11-02 | 37 | 29d |  | start no earlier than 2009-10-30 | 吴同庆 | 16h |
| 39 | 6.15 | 新玩法页面配置-设计 | 2d? | 2009-11-03 | 2009-11-04 |  | 23d | 0d | start no earlier than 2009-11-03 | 吴同庆 | 16h |
| 40 | 6.16 | 活动专区页面配置-开发 | 2d? | 2009-11-03 | 2009-11-04 | 34 | 1d | 0d | finish no earlier than 2009-11-04 | 甘雨波 | 16h |
| 41 | 6.17 | 精彩促销页面配置-开发 | 1d? | 2009-11-05 | 2009-11-05 | 40 | 1d | 0d |  | 甘雨波; 林福春 | 16h |
| 42 | 6.18 | 特价宝贝页面配置-开发 | 2d | 2009-11-06 | 2009-11-09 | 41 | 1d | 0d |  | 甘雨波; 林福春 | 32h |
| 43 | 6.19 | 业务体验页面配置-开发 | 2d | 2009-11-10 | 2009-11-11 | 42 | 1d | 0d |  | 甘雨波; 林福春 | 32h |
| 44 | 6.20 | 软件下载页面配置-开发 | 2d | 2009-11-12 | 2009-11-13 | 43 | 1d | 0d |  | 甘雨波; 林福春 | 32h |
| 45 | 6.21 | 新玩法页面配置-开发 | 2d | 2009-11-16 | 2009-11-17 | 44 | 1d | 0d |  | 甘雨波 | 16h |

| ID | WBS | Task | Duration | Start | Finish | Predecessors | Total slack | Free slack | Constraint | Resources | Work |
| --- | --- | --- | --- | --- | --- | --- | --- | --- | --- | --- | --- |
| 46 | 7 | **用户登录管理** | 10d? | 2009-11-02 | 2009-11-13 |  | 20d |  |  |  | 320h |
| 47 | 7.1 | 单点认证管理 | 10d? | 2009-11-02 | 2009-11-13 |  | 20d |  | finish no earlier than 2009-11-13 | 黄晓春; 林福春 | 160h |
| 48 | 7.2 | 登录日志管理 | 10d? | 2009-11-02 | 2009-11-13 |  | 20d |  | start no earlier than 2009-11-02 | 黄晓春; 林福春 | 160h |
| 49 | 8 | **系统管理** | 13d | 2009-11-05 | 2009-11-23 |  | 10d |  |  |  | 80h |
| 50 | 8.1 | 后台用户管理-设计 | 2d | 2009-11-05 | 2009-11-06 | 39 | 23d | 0d |  | 吴同庆; 陈庭昀 | 32h |
| 51 | 8.2 | 后台菜单管理-设计 | 2d | 2009-11-09 | 2009-11-10 | 50 | 23d |  |  | 吴同庆 | 16h |
| 52 | 8.3 | 后台用户管理-开发 | 2d | 2009-11-18 | 2009-11-19 | 45 | 1d | 0d |  | 甘雨波 | 16h |
| 53 | 8.4 | 后台菜单管理-开发 | 2d | 2009-11-20 | 2009-11-23 | 52 | 1d | 0d |  | 甘雨波 | 16h |
| 54 | 9 | **测试&培训** | 14d | 2009-11-24 | 2009-12-11 |  | 0d |  |  |  | 296h |
| 55 | 9.1 | 测试环境系统功能测试 | 4d | 2009-11-24 | 2009-11-27 | 53 | 1d |  |  | 谢芸 | 32h |
| 56 | 9.2 | 生产环境搭建 | 3d | 2009-12-01 | 2009-12-03 | 55 | 0d |  | finish no earlier than 2009-12-03 | 吴同庆; 林裕辉 | 48h |
| 57 | 9.3 | 测试数据迁移 | 3d | 2009-12-04 | 2009-12-08 | 56 | 0d |  |  | 吴同庆; 林裕辉 | 48h |
| 58 | 9.4 | 生产环境系统功能测试 | 3d | 2009-12-09 | 2009-12-11 | 57 | 0d |  |  | 谢芸 | 24h |
| 59 | 9.5 | 业务培训 | 4d | 2009-12-01 | 2009-12-04 |  | 0d |  | start no earlier than 2009-12-01 | 谢芸; 甘雨波 | 64h |
| 60 | 9.6 | 客户测试 | 5d | 2009-12-07 | 2009-12-11 | 59 | 0d |  |  | 谢芸; 公客部 | 80h |
