Schedule from MS Project, 2009-09-15 to 2009-12-11.

## Calendars

- 标准: Mon-Fri 08:00-12:00, 13:00-17:00; Sat-Sun off. Exceptions (off unless hours are given): 2009-10-10 08:00-12:00, 13:00-17:00.

## Resources

| Resource |
| --- |
| 甘雨波 |
| 吴同庆 |
| 公客部 |
| 孙成 |
| 定向传媒 |
| 谢芸 |
| 林福春 |
| 陈庭昀 |
| 林裕辉 |

## Schedule

| ID | Task | Duration | Start | Finish | Predecessors | Total slack | Free slack | Constraint | Resources | Work |
| --- | --- | --- | --- | --- | --- | --- | --- | --- | --- | --- |
| 1 | 业务类别配置-开发 | 2d? | 2009-09-15 | 2009-09-16 |  | 41d | 0d | finish no earlier than 2009-09-16 | 甘雨波 | 16h |
| 2 | 业务类型配置-开发 | 2d | 2009-09-17 | 2009-09-18 | 1 | 41d | 0d |  | 甘雨波 | 16h |
| 3 | 增值业务配置-设计 | 2d? | 2009-09-15 | 2009-09-16 |  | 38d | 0d | start no earlier than 2009-09-15 | 吴同庆 | 16h |
| 4 | 增值业务配置-应用开发 | 3d? | 2009-09-17 | 2009-09-21 | 3 | 38d | 0d | finish no earlier than 2009-09-21 | 吴同庆 | 24h |
| 5 | 增值业务配置-web开发 | 3d? | 2009-09-21 | 2009-09-23 | 2 | 41d |  | start no earlier than 2009-09-21 | 甘雨波 | 24h |
| 6 | 增值业务数据整理 | 7d? | 2009-09-15 | 2009-09-23 |  | 41d |  | start no earlier than 2009-09-15 | 公客部 | 56h |
| 7 | 增值业务接口-设计 | 3d? | 2009-09-22 | 2009-09-24 | 4 | 38d | 0d | start no earlier than 2009-09-22 | 吴同庆 | 24h |
| 8 | 增值业务接口-web开发 | 2d? | 2009-09-25 | 2009-09-28 |  | 38d |  | finish no earlier than 2009-09-28 | 甘雨波 | 16h |
| 9 | 增值业务接口-接口开发 | 2d? | 2009-09-25 | 2009-09-28 | 7 | 38d |  | start no earlier than 2009-09-25 | 孙成 | 16h |
| 10 | 增值业务页面设计 | 10d? | 2009-09-15 | 2009-09-28 |  | 38d |  | start no earlier than 2009-09-15 | 定向传媒 | 80h |
| 11 | 增值业务页面相关资源制作 | 24d? | 2009-10-09 | 2009-11-10 |  | 4d | 0d | finish no earlier than 2009-11-10 | 定向传媒 | 192h |
| 12 | 业务配置及接口功能测试 | 2d? | 2009-09-29 | 2009-09-30 |  | 53d |  | finish no earlier than 2009-09-30 | 谢芸 | 16h |
| 13 | 增值业务数据录入 | 6d? | 2009-10-09 | 2009-10-15 |  | 24d |  | finish no earlier than 2009-10-15 | 谢芸 | 48h |
| 14 | 我的订购-设计 | 3d | 2009-09-25 | 2009-09-29 |  | 45d | 7d | finish no earlier than 2009-09-29 | 吴同庆; 陈庭昀 | 48h |
| 15 | 我的订购-web开发 | 2d | 2009-10-10 | 2009-10-12 |  | 44d |  | finish no earlier than 2009-10-12 | 甘雨波; 林福春 | 32h |
| 16 | 我的订购-应用开发 | 3d? | 2009-10-09 | 2009-10-12 | 14 | 38d | 0d | finish no earlier than 2009-10-12 | 吴同庆 | 24h |
| 17 | 用户评论，打分-设计 | 3d? | 2009-10-13 | 2009-10-15 | 16 | 21d | 0d | finish no earlier than 2009-10-13 | 吴同庆 | 24h |
| 18 | 用户评论，打分-开发 | 2d | 2009-10-16 | 2009-10-19 |  | 1d | 0d | start no earlier than 2009-10-16 | 甘雨波; 林福春 | 32h |
| 19 | 模块配置-设计 | 3d | 2009-10-16 | 2009-10-20 | 17 | 38d |  | finish no earlier than 2009-10-12 | 吴同庆; 陈庭昀 | 48h |
| 20 | 活动专区模块配置-开发 | 2d | 2009-10-20 | 2009-10-21 | 18 | 33d | 0d | finish no earlier than 2009-10-15 | 甘雨波 | 16h |
| 21 | 导航菜单配置-开发 | 2d | 2009-10-22 | 2009-10-23 | 20 | 33d | 0d | start no earlier than 2009-10-09 | 甘雨波; 林福春 | 32h |
| 22 | 广告栏配置-开发 | 2d? | 2009-10-26 | 2009-10-27 | 21 | 33d |  | finish no earlier than 2009-10-13 | 甘雨波 | 16h |
| 23 | 页面配置功能测试 | 2d? | 2009-10-19 | 2009-10-20 |  | 7d | 0d | finish no earlier than 2009-10-20 | 谢芸 | 16h |
| 24 | 超值特价模块配置-开发 | 2d? | 2009-10-20 | 2009-10-21 | 18 | 1d | 0d | finish no earlier than 2009-10-21 | 甘雨波 | 16h |
| 25 | 精彩促销模块配置-开发 | 2d? | 2009-10-22 | 2009-10-23 | 24 | 1d | 0d | finish no earlier than 2009-10-23 | 甘雨波 | 16h |
| 26 | 最新上架模块配置-开发 | 2d | 2009-10-26 | 2009-10-27 | 25 | 1d | 0d | finish no earlier than 2009-10-27 | 甘雨波; 林福春 | 32h |
| 27 | 产品体验模块配置-开发 | 2d? | 2009-10-28 | 2009-10-29 | 26 | 1d | 0d | finish no earlier than 2009-10-29 | 甘雨波 | 16h |
| 28 | 活动专区模块配置-开发 | 2d | 2009-10-30 | 2009-11-02 | 27 | 1d | 0d | finish no earlier than 2009-11-02 | 甘雨波; 林福春 | 32h |
| 29 | 活动专区页面配置-设计 | 2d | 2009-10-21 | 2009-10-22 | 23 | 24d | 0d | finish no earlier than 2009-10-22 | 吴同庆; 陈庭昀 | 32h |
| 30 | 精彩促销页面配置-设计 | 2d? | 2009-10-23 | 2009-10-26 | 29 | 7d | 1d |  | 吴同庆 | 16h |
| 31 | 特价宝贝页面配置-设计 | 2d | 2009-10-28 | 2009-10-29 | 30 | 23d | 0d | start no earlier than 2009-10-28 | 吴同庆; 陈庭昀 | 32h |
| 32 | 软件下载页面配置-设计 | 2d? | 2009-10-30 | 2009-11-02 | 31 | 6d | 0d | start no earlier than 2009-10-30 | 吴同庆 | 16h |
| 33 | 新玩法页面配置-设计 | 2d? | 2009-11-03 | 2009-11-04 | 32 | 6d | 0d | start no earlier than 2009-11-03 | 吴同庆 | 16h |
| 34 | 活动专区页面配置-开发 | 2d? | 2009-11-03 | 2009-11-04 | 28 | 1d | 0d | finish no earlier than 2009-11-04 | 甘雨波 | 16h |
| 35 | 精彩促销页面配置-开发 | 1d? | 2009-11-05 | 2009-11-05 | 34 | 1d | 0d |  | 甘雨波; 林福春 | 16h |
| 36 | 特价宝贝页面配置-开发 | 2d | 2009-11-06 | 2009-11-09 | 35 | 1d | 0d |  | 甘雨波; 林福春 | 32h |
| 37 | 业务体验页面配置-开发 | 2d | 2009-11-10 | 2009-11-11 | 36 | 1d | 0d |  | 甘雨波; 林福春 | 32h |
| 38 | 软件下载页面配置-开发 | 2d | 2009-11-12 | 2009-11-13 | 37 | 1d | 0d |  | 甘雨波; 林福春 | 32h |
| 39 | 新玩法页面配置-开发 | 2d | 2009-11-16 | 2009-11-17 | 38 | 1d | 0d |  | 甘雨波 | 16h |
| 40 | 后台用户管理-设计 | 2d | 2009-11-05 | 2009-11-06 | 33 | 23d | 0d |  | 吴同庆; 陈庭昀 | 32h |
| 41 | 后台菜单管理-设计 | 2d | 2009-11-09 | 2009-11-10 | 40 | 23d |  |  | 吴同庆 | 16h |
| 42 | 后台用户管理-开发 | 2d | 2009-11-18 | 2009-11-19 | 39 | 1d | 0d |  | 甘雨波 | 16h |
| 43 | 后台菜单管理-开发 | 2d | 2009-11-20 | 2009-11-23 | 42 | 1d | 0d |  | 甘雨波 | 16h |
| 44 | 测试环境系统功能测试 | 4d | 2009-11-24 | 2009-11-27 | 43 | 1d |  |  | 谢芸 | 32h |
| 45 | 生产环境搭建 | 3d | 2009-12-01 | 2009-12-03 | 44 | 0d |  | finish no earlier than 2009-12-03 | 吴同庆; 林裕辉 | 48h |
| 46 | 测试数据迁移 | 3d | 2009-12-04 | 2009-12-08 | 45 | 0d |  |  | 吴同庆; 林裕辉 | 48h |
| 47 | 生产环境系统功能测试 | 3d | 2009-12-09 | 2009-12-11 | 46 | 0d |  |  | 谢芸 | 24h |
| 48 | 业务培训 | 4d | 2009-12-01 | 2009-12-04 |  | 0d |  | start no earlier than 2009-12-01 | 谢芸; 甘雨波 | 64h |
| 49 | 客户测试 | 5d | 2009-12-07 | 2009-12-11 | 48 | 0d |  |  | 谢芸; 公客部 | 80h |
